# 餐谋长时间规划

How a schedule from MS Project changed from version to version. A marks actual dates.

## Version 1 (saved 2020-04-08)

Note of the change: cuihao

| ID | WBS | Task | Duration | Start | Finish | Predecessors | Total float |
| --- | --- | --- | --- | --- | --- | --- | --- |
| 1 | 1 | **启动** | 7d | 2020-04-01 | 2020-04-10 |  |  |
| 2 |  | 组建核心团队 | 1d? | 2020-04-01 | 2020-04-02 |  | 0d |
| 3 |  | 干系人分析 | 1d? | 2020-04-01 | 2020-04-02 |  | 0d |
| 4 |  | 里程碑计划 | 1d? | 2020-04-01 | 2020-04-02 |  | 0d |
| 5 |  | 制定项目章程 | 1d? | 2020-04-02 | 2020-04-03 | 2, 3, 4 | 0d |
| 6 |  | 项目启动大会 | 1d? | 2020-04-03 | 2020-04-06 | 5 | 0d |
| 7 | 2 | **规划** | 10d | 2020-04-11 | 2020-04-24 |  |  |
| 8 | 2.1 | **规划范围** | 2d | 2020-04-11 | 2020-04-14 |  |  |
| 9 |  | 制定需求说明书 | 0.12d | 2020-04-06 | 2020-04-07 | 6 |  |
| 10 |  | 界面设计 | 0.12d | 2020-04-07 | 2020-04-08 | 9 |  |
| 11 |  | 详细设计说明书 | 0.12d | 2020-04-07 | 2020-04-08 | 9 |  |
| 12 |  | 范围说明书 | 0.12d | 2020-04-07 | 2020-04-08 | 9 |  |
| 13 |  | 创建WBS | 0.12d | 2020-04-08 | 2020-04-09 | 10, 11, 12 |  |
| 14 |  | 形成范围基准 | 0.12d | 2020-04-09 | 2020-04-10 | 13 |  |
| 15 | 2.2 | **规划时间** | 2d | 2020-04-14 | 2020-04-16 |  |  |
| 16 |  | 排列工作包顺序 | 1d | 2020-04-10 | 2020-04-13 | 14 |  |
| 17 |  | 估算资源 | 1d | 2020-04-13 | 2020-04-14 | 16 |  |
| 18 |  | 估算项目持续时间 | 1d | 2020-04-14 | 2020-04-15 | 17 |  |
| 19 |  | 制定进度计划 | 1d | 2020-04-15 | 2020-04-16 | 18 |  |
| 20 | 2.3 | **规划成本** | 3d | 2020-04-15 | 2020-04-20 |  |  |
| 21 |  | 项目成本估算 | 1d | 2020-04-16 | 2020-04-17 | 19 |  |
| 22 |  | 项目预算 | 1d | 2020-04-17 | 2020-04-20 | 21 |  |
| 23 | 2.4 | **规划质量** | 1d | 2020-04-16 | 2020-04-17 |  |  |
| 24 |  | 制定测试计划 | 1d | 2020-04-10 | 2020-04-13 | 14 |  |
| 25 |  | 制定测试用例 | 1d | 2020-04-13 | 2020-04-14 | 24 |  |
| 26 | 2.5 | **规划人力资源** | 1d | 2020-04-17 | 2020-04-20 |  |  |
| 27 |  | 制定人力资源计划 | 1d | 2020-04-14 | 2020-04-15 | 17 |  |
| 28 |  | 制定人员安排 | 1d | 2020-04-15 | 2020-04-16 | 27 |  |
| 29 | 2.6 | **规划沟通** | 1d | 2020-04-18 | 2020-04-20 |  |  |
| 30 |  | 制定沟通计划 | 1d | 2020-04-16 | 2020-04-17 | 28 |  |
| 31 | 2.7 | **规划风险** | 2d | 2020-04-20 | 2020-04-22 |  |  |
| 32 |  | 制定风险分析 | 1d | 2020-04-17 | 2020-04-20 | 30 |  |
| 33 |  | 制定风险登记册 | 1d | 2020-04-20 | 2020-04-21 | 32 |  |
| 34 |  | 制定风险规避计划 | 1d | 2020-04-21 | 2020-04-22 | 33 |  |
| 35 |  | 规划整合 | 1d? | 2020-04-22 | 2020-04-23 | 34 |  |
| 36 | 3 | **执行与监控** | 20d | 2020-04-25 | 2020-05-22 |  |  |
| 37 |  | 组建项目团队 | 1d | 2020-04-22 | 2020-04-23 | 34 |  |
| 38 | 3.2 | **项目执行** | 18d | 2020-04-25 | 2020-05-20 |  |  |
| 39 | 3.2.1 | **买家模块** | 7d | 2020-04-25 | 2020-05-05 |  |  |
| 40 |  | 注册登录 | 1d | 2020-04-22 | 2020-04-23 | 34 |  |
| 41 |  | 首页浏览 | 1d | 2020-04-22 | 2020-04-23 | 34 |  |
| 42 |  | 搜索菜谱 | 1d | 2020-04-22 | 2020-04-23 | 34 |  |
| 43 |  | 查看菜谱详情 | 1d | 2020-04-22 | 2020-04-23 | 34 |  |
| 44 |  | 浏览菜品 | 1d | 2020-04-22 | 2020-04-23 | 34 |  |
| 45 |  | 添加购物车 | 1d | 2020-04-23 | 2020-04-24 | 40 |  |
| 46 |  | 添加地址 | 1d | 2020-04-23 | 2020-04-24 | 40 |  |
| 47 |  | 下单 | 1d | 2020-04-23 | 2020-04-24 | 46 |  |
| 48 |  | 更改个人信息 | 1d | 2020-04-23 | 2020-04-24 | 40 |  |
| 49 |  | 菜谱上传 | 1d | 2020-04-23 | 2020-04-24 | 40 |  |
| 50 |  | 浏览社区 | 1d | 2020-04-23 | 2020-04-24 | 40 |  |
| 51 | 3.2.2 | **卖家模块** | 6d | 2020-04-25 | 2020-05-04 |  |  |
| 52 |  | 注册登录 | 1d | 2020-04-22 | 2020-04-23 | 34 |  |
| 53 |  | 注册商店 | 1d | 2020-04-23 | 2020-04-24 | 52 |  |
| 54 |  | 添加菜品 | 1d | 2020-04-24 | 2020-04-27 | 53 |  |
| 55 |  | 更改菜品信息 | 1d | 2020-04-27 | 2020-04-28 | 54 |  |
| 56 |  | 查看订单 | 1d | 2020-04-23 | 2020-04-24 | 52 |  |
| 57 |  | 订单处理 | 1d | 2020-04-23 | 2020-04-24 | 52 |  |
| 58 | 3.2.3 | **管理员模块** | 5d | 2020-04-25 | 2020-05-01 |  |  |
| 59 |  | 验证商家信息 | 1d | 2020-04-24 | 2020-04-27 | 53 |  |
| 60 |  | 更新首页推荐 | 1d | 2020-04-22 | 2020-04-23 | 34 |  |
| 61 |  | 更新菜谱信息 | 1d | 2020-04-22 | 2020-04-23 | 34 |  |
| 62 |  | 用户数据备份 | 1d | 2020-04-23 | 2020-04-24 | 40, 52 |  |
| 63 | 3.3 | **项目监控** | 6d | 2020-04-25 | 2020-05-04 |  |  |
| 64 |  | 各项指标监控 | 1d | 2020-04-23 | 2020-04-24 | 37 |  |
| 65 |  | 监控评审 | 1d | 2020-04-24 | 2020-04-27 | 64 |  |
| 66 |  | 变更评审 | 1d | 2020-04-27 | 2020-04-28 | 65 |  |
| 67 |  | 例会 | 1d | 2020-04-28 | 2020-04-29 | 37 |  |
| 68 | 3.4 | **管理干系人** | 1d | 2020-04-25 | 2020-04-27 |  |  |
| 69 |  | 发布项目信息 | 1d | 2020-04-23 | 2020-04-24 | 37 |  |
| 70 |  | 报告监控指标 | 1d | 2020-04-23 | 2020-04-24 | 37 |  |

| ID | WBS | Task | Duration | Start | Finish | Predecessors |
| --- | --- | --- | --- | --- | --- | --- |
| 71 |  | 干系人沟通 | 1d | 2020-04-23 | 2020-04-24 | 37 |
| 72 | 3.5 | **团队建设** | 1d | 2020-04-25 | 2020-04-27 |  |
| 73 |  | 培训 | 0.12d | 2020-04-23 | 2020-04-24 | 37 |
| 74 |  | 例会沟通 | 0.12d | 2020-04-23 | 2020-04-24 | 37 |
| 75 |  | 项目验收 | 0.12d | 2020-04-23 | 2020-04-24 | 37 |
| 76 | 4 | **收尾** | 1d? | 2020-04-29 | 2020-04-30 |  |
| 77 |  | 项目终验 | 1d | 2020-04-24 | 2020-04-27 | 75 |
| 78 |  | 项目收尾 | 1d | 2020-04-27 | 2020-04-28 | 77 |

## Version 2 (saved 2020-04-15)

Note of the change: zjq

Last finish 2020-05-22 → 2020-07-30 (+69d).

Added:

| ID | Task | Duration | Start | Finish | Predecessors | Resources |
| --- | --- | --- | --- | --- | --- | --- |
| 20 | 形成进度基准 | 1d | 2020-04-23 | 2020-04-24 | 19 | 项目经理 |

Changed:

| ID | Task | Start | Finish | Duration | Total float | Predecessors | Other |
| --- | --- | --- | --- | --- | --- | --- | --- |
| 2 | 组建核心团队 |  | 2020-04-02 → 2020-04-03 (+1d) | 1d? → 2d? | 0d → -1.88d |  | resources 项目经理; 产品经理; 技术专家; UI专家; 测试员 → 项目经理; 产品经理; 技术专家; UI专家; 测试员; 程序员3 |
| 4 | 里程碑计划 | 2020-04-01 → 2020-04-03 (+2d) | 2020-04-02 → 2020-04-06 (+4d) |  | 0d → -2.88d |  |  |
| 5 | 制定项目章程 | 2020-04-02 → 2020-04-06 (+4d) | 2020-04-03 → 2020-04-07 (+4d) |  | 0d → -2.88d |  |  |
| 6 | 项目启动大会 | 2020-04-03 → 2020-04-07 (+4d) | 2020-04-06 → 2020-04-08 (+2d) | 1d? → 1.88d? | 0d → -2.88d |  |  |
| 7 | **规划** | 2020-04-11 → 2020-04-06 (-5d) | 2020-04-24 → 2020-05-14 (+20d) | 10d → 28.88d? | none → 0d |  |  |
| 8 | **规划范围** |  | 2020-04-14 → 2020-04-15 (+1d) | 2d → 3d |  |  |  |
| 9 | 制定需求说明书 |  |  | 0.12d → 1d |  |  |  |
| 15 | **规划时间** | 2020-04-14 → 2020-04-10 (-4d) | 2020-04-16 → 2020-04-24 (+8d) | 2d → 11d |  |  |  |
| 16 | 排列工作包顺序 |  | 2020-04-13 → 2020-04-16 (+3d) | 1d → 3d |  |  | constraint none → start no earlier than 2020-04-10 |
| 17 | 估算资源 | 2020-04-13 → 2020-04-16 (+3d) | 2020-04-14 → 2020-04-21 (+7d) | 1d → 3d |  |  | constraint none → start no earlier than 2020-04-16 |
| 18 | 估算项目持续时间 | 2020-04-14 → 2020-04-21 (+7d) | 2020-04-15 → 2020-04-22 (+7d) |  |  |  |  |
| 19 | 制定进度计划 | 2020-04-15 → 2020-04-22 (+7d) | 2020-04-16 → 2020-04-23 (+7d) |  |  |  |  |
| 21 | **规划成本** | 2020-04-15 → 2020-04-24 (+9d) | 2020-04-20 → 2020-05-04 (+14d) | 3d → 6d |  |  |  |
| 22 | 项目成本估算 | 2020-04-16 → 2020-04-24 (+8d) | 2020-04-17 → 2020-04-27 (+10d) | 1d → 0.88d |  | 19 → 20 |  |
| 23 | 项目预算 | 2020-04-17 → 2020-04-28 (+11d) | 2020-04-20 → 2020-04-30 (+10d) | 1d → 3d |  |  |  |
| 27 | **规划人力资源** | 2020-04-17 → 2020-05-04 (+17d) | 2020-04-20 → 2020-05-07 (+17d) | 1d → 3d |  |  |  |
| 28 | 制定人力资源计划 | 2020-04-14 → 2020-05-04 (+20d) | 2020-04-15 → 2020-05-05 (+20d) |  |  |  |  |
| 29 | 制定人员安排 | 2020-04-15 → 2020-05-06 (+21d) | 2020-04-16 → 2020-05-07 (+21d) |  |  |  |  |
| 30 | **规划沟通** | 2020-04-18 → 2020-05-07 (+19d) | 2020-04-20 → 2020-05-08 (+18d) | 1d → 2d |  |  |  |
| 31 | 制定沟通计划 | 2020-04-16 → 2020-05-07 (+21d) | 2020-04-17 → 2020-05-08 (+21d) |  |  |  |  |
| 32 | **规划风险** | 2020-04-20 → 2020-05-08 (+18d) | 2020-04-22 → 2020-05-14 (+22d) | 2d → 5d |  |  |  |
| 33 | 制定风险分析 | 2020-04-17 → 2020-05-08 (+21d) | 2020-04-20 → 2020-05-11 (+21d) |  |  |  |  |
| 34 | 制定风险登记册 | 2020-04-20 → 2020-05-11 (+21d) | 2020-04-21 → 2020-05-12 (+21d) |  |  |  |  |
| 35 | 制定风险规避计划 | 2020-04-21 → 2020-05-13 (+22d) | 2020-04-22 → 2020-05-13 (+21d) |  |  |  |  |
| 36 | 规划整合 | 2020-04-22 → 2020-05-14 (+22d) | 2020-04-23 → 2020-05-14 (+21d) |  |  |  | resources none → 项目经理 |
| 37 | **执行与监控** | 2020-04-25 → 2020-05-16 (+21d) | 2020-05-22 → 2020-07-30 (+69d) | 20d → 55d |  |  |  |
| 38 | 组建项目团队 | 2020-04-22 → 2020-05-15 (+23d) | 2020-04-23 → 2020-05-15 (+22d) |  |  | 35 → 36 | resources UI专家; 测试员; 产品经理; 技术专家; 项目经理 → 测试员; 产品经理; 程序员1; 程序员2; 程序员3 |
| 39 | **项目执行** | 2020-04-25 → 2020-05-18 (+23d) | 2020-05-20 → 2020-06-29 (+40d) | 18d → 30d |  |  |  |
| 40 | **买家模块** | 2020-04-25 → 2020-05-18 (+23d) | 2020-05-05 → 2020-06-02 (+28d) | 7d → 11d |  |  |  |
| 41 | 注册登录 | 2020-04-22 → 2020-05-18 (+26d) | 2020-04-23 → 2020-05-19 (+26d) |  |  | 35 → 38 | resources 技术专家 → 程序员1 |
| 42 | 首页浏览 | 2020-04-22 → 2020-05-19 (+27d) | 2020-04-23 → 2020-05-20 (+27d) |  |  | 35 → 38 | resources 技术专家 → 程序员1 |
| 43 | 搜索菜谱 | 2020-04-22 → 2020-05-20 (+28d) | 2020-04-23 → 2020-05-21 (+28d) |  |  | 35 → 38 | resources 技术专家 → 程序员1 |
| 44 | 查看菜谱详情 | 2020-04-22 → 2020-05-21 (+29d) | 2020-04-23 → 2020-05-22 (+29d) |  |  | 35 → 38 | resources 技术专家 → 程序员1 |
| 45 | 浏览菜品 | 2020-04-22 → 2020-05-22 (+30d) | 2020-04-23 → 2020-05-25 (+32d) |  |  | 35 → 38 | resources 技术专家 → 程序员1 |
| 46 | 添加购物车 | 2020-04-23 → 2020-05-25 (+32d) | 2020-04-24 → 2020-05-26 (+32d) |  |  |  | resources 技术专家 → 程序员1 |
| 47 | 添加地址 | 2020-04-23 → 2020-05-26 (+33d) | 2020-04-24 → 2020-05-27 (+33d) |  |  |  | resources 技术专家 → 程序员1 |
| 48 | 下单 | 2020-04-23 → 2020-05-27 (+34d) | 2020-04-24 → 2020-05-28 (+34d) |  |  | 47 → 41 | resources 技术专家 → 程序员1 |
| 49 | 更改个人信息 | 2020-04-23 → 2020-05-28 (+35d) | 2020-04-24 → 2020-05-29 (+35d) |  |  |  | resources 技术专家 → 程序员1 |
| 50 | 菜谱上传 | 2020-04-23 → 2020-05-29 (+36d) | 2020-04-24 → 2020-06-01 (+38d) |  |  |  | resources 技术专家 → 程序员1 |
| 51 | 浏览社区 | 2020-04-23 → 2020-06-01 (+39d) | 2020-04-24 → 2020-06-02 (+39d) |  |  |  | resources 技术专家 → 程序员1 |
| 52 | **卖家模块** | 2020-04-25 → 2020-05-18 (+23d) | 2020-05-04 → 2020-05-27 (+23d) | 6d → 7d |  |  |  |
| 53 | 注册登录 | 2020-04-22 → 2020-05-18 (+26d) | 2020-04-23 → 2020-05-19 (+26d) |  |  | 35 → 36 | resources 技术专家 → 程序员2 |
| 54 | 注册商店 | 2020-04-23 → 2020-05-19 (+26d) | 2020-04-24 → 2020-05-20 (+26d) |  |  |  | resources 技术专家 → 程序员2 |
| 55 | 添加菜品 | 2020-04-24 → 2020-05-20 (+26d) | 2020-04-27 → 2020-05-22 (+25d) | 1d → 2d |  |  | resources 技术专家 → 程序员2 |
| 56 | 更改菜品信息 | 2020-04-27 → 2020-05-25 (+28d) | 2020-04-28 → 2020-05-26 (+28d) |  |  |  | resources 技术专家 → 程序员2 |
| 57 | 查看订单 | 2020-04-23 → 2020-05-26 (+33d) | 2020-04-24 → 2020-05-27 (+33d) |  |  |  | resources 技术专家 → 程序员2 |
| 58 | 订单处理 | 2020-04-23 → 2020-05-22 (+29d) | 2020-04-24 → 2020-05-25 (+31d) |  |  |  | resources 技术专家 → 程序员2 |
| 59 | **管理员模块** | 2020-04-25 → 2020-05-18 (+23d) | 2020-05-01 → 2020-05-29 (+28d) | 5d → 9d |  |  |  |
| 60 | 验证商家信息 | 2020-04-24 → 2020-05-20 (+26d) | 2020-04-27 → 2020-05-21 (+24d) |  |  |  | resources 技术专家 → 程序员3 |
| 61 | 更新首页推荐 | 2020-04-22 → 2020-05-19 (+27d) | 2020-04-23 → 2020-05-22 (+29d) | 1d → 2d |  | 35 → 36 | resources 技术专家 → 程序员3 |
| 62 | 更新菜谱信息 | 2020-04-22 → 2020-05-18 (+26d) | 2020-04-23 → 2020-05-19 (+26d) |  |  | 35 → 36 | resources 技术专家 → 程序员3 |
| 63 | 用户数据备份 | 2020-04-23 → 2020-05-26 (+33d) | 2020-04-24 → 2020-05-27 (+33d) | 1d → 1.88d |  |  | resources 技术专家 → 程序员3 |
| 64 | **项目监控** | 2020-04-25 → 2020-05-18 (+23d) | 2020-05-04 → 2020-07-01 (+58d) | 6d → 33.12d |  |  |  |
| 65 | 各项指标监控 | 2020-04-23 → 2020-05-18 (+25d) | 2020-04-24 → 2020-05-19 (+25d) | 1d → 1.12d | none → 27.88d |  |  |
| 66 | 监控评审 | 2020-04-24 → 2020-05-20 (+26d) | 2020-04-27 → 2020-05-21 (+24d) | 1d → 0.25d | none → 27.88d |  |  |
| 67 | 变更评审 | 2020-04-27 → 2020-05-21 (+24d) | 2020-04-28 → 2020-05-25 (+27d) | 1d → 1.12d | none → 27.88d |  |  |
| 68 | 例会 | 2020-04-28 → 2020-05-18 (+20d) | 2020-04-29 → 2020-05-18 (+19d) | 1d → 0.12d | none → 32d |  |  |
| 69 | **管理干系人** | 2020-04-25 → 2020-06-22 (+58d) | 2020-04-27 → 2020-07-02 (+66d) | 1d → 9d |  |  |  |
| 70 | 发布项目信息 | 2020-04-23 → 2020-06-25 (+63d) | 2020-04-24 → 2020-06-26 (+63d) |  |  |  |  |
| 71 | 报告监控指标 | 2020-04-23 → 2020-07-02 (+70d) | 2020-04-24 → 2020-07-02 (+69d) |  |  |  |  |
| 72 | 干系人沟通 | 2020-04-23 → 2020-06-24 (+62d) | 2020-04-24 → 2020-06-26 (+63d) | 1d → 2d |  |  |  |
| 73 | **团队建设** | 2020-04-25 → 2020-06-19 (+55d) | 2020-04-27 → 2020-06-29 (+63d) | 1d → 7d |  |  |  |
| 74 | 培训 | 2020-04-23 → 2020-06-19 (+57d) | 2020-04-24 → 2020-06-29 (+66d) | 0.12d → 3.75d |  |  | resources 产品经理; 技术专家 → 产品经理; 技术专家; UI专家; 测试员; 项目经理 |
| 75 | 例会沟通 | 2020-04-23 → 2020-06-16 (+54d) | 2020-04-24 → 2020-06-17 (+54d) |  |  |  |  |
| 76 | 项目验收 | 2020-04-23 → 2020-06-18 (+56d) | 2020-04-24 → 2020-06-19 (+56d) |  |  |  |  |
| 77 | **收尾** | 2020-04-29 → 2020-06-22 (+54d) | 2020-04-30 → 2020-07-17 (+78d) | 1d? → 19.12d | none → 0d |  |  |
| 78 | 项目终验 | 2020-04-24 → 2020-06-22 (+59d) | 2020-04-27 → 2020-06-23 (+57d) | 1d → 0.88d |  |  |  |
| 79 | 项目收尾 | 2020-04-27 → 2020-07-15 (+79d) | 2020-04-28 → 2020-07-17 (+80d) |  |  |  |  |
